# SR1620

Schedule from a web Gantt chart, 2024-12-16 to 2024-12-16.
Saturdays and Sundays are off

## Schedule

| ID | WBS | Task | Duration | Start | Finish |
| --- | --- | --- | --- | --- | --- |
| 2 | 1 | **CEC202407-001** | 1d | 2024-12-16 | 2024-12-16 |
| 3 | 1.1 | 需求/设计 | 1d | 2024-12-16 | 2024-12-16 |
| 4 | 1.2 | 技术方案 | 1d | 2024-12-16 | 2024-12-16 |
| 5 | 1.3 | 软件开发 | 1d | 2024-12-16 | 2024-12-16 |
| 6 | 1.4 | 软件集成 | 1d | 2024-12-16 | 2024-12-16 |
